# Replanificación3

Schedule from MS Project, 2015-09-24 to 2015-10-21, status date 2015-09-25, A marks actual dates.

## Calendars

- Estándar: Mon-Wed 08:30-21:10; Thu 08:30-13:00; Fri 08:30-21:10; Sat-Sun off.

## Schedule

| ID | WBS | Task | Type | Duration | Start | Finish | Predecessors | Complete | Remaining | Total slack | Free slack | Constraint | Responsable |
| --- | --- | --- | --- | --- | --- | --- | --- | --- | --- | --- | --- | --- | --- |
| 1 | 1 | **Etapa 1** |  | 26.15d? | 2015-09-24 A | 2015-10-21 |  | 10% | 23.45d? | 0d |  |  |  |
| 2 | 1.1 | **Módulo Usuario** |  | 21.15d? | 2015-09-24 A | 2015-10-15 |  | 10% | 19.02d? | 0d |  |  |  |
| 3 | 1.1.1 | **Diseño** |  | 8.15d | 2015-09-24 A | 2015-10-02 |  | 41% | 4.83d | -0.15d | 0d |  |  |
| 4 | 1.1.1.1 | **Diseño preliminar aplicación** |  | 3d | 2015-09-24 A | 2015-09-28 |  | 56% | 1.32d | 0d |  |  |  |
| 5 | 1.1.1.1.1 | Creación de ventanas |  | 3d | 2015-09-24 A | 2015-09-28 |  | 60% | 1.2d | 0d |  |  | Daniela Paredes |
| 6 | 1.1.1.1.2 | Comprobar coherencia con requisitos de interfaz |  | 1d | 2015-09-24 | 2015-09-25 |  |  |  | 2d |  |  | Yanira Guevara |
| 7 | 1.1.1.1.3 | Control de estandar de código |  | 1d | 2015-09-24 A | 2015-09-25 A |  | 100% |  |  |  | start no earlier than 2015-09-24 | Yanira Guevara |
| 8 | 1.1.1.1.4 | Diseño preliminar de aplicación terminado | milestone | 0d | 2015-09-28 | 2015-09-28 | 5, 6 |  |  | 0d |  |  |  |
| 9 | 1.1.1.2 | **Diseño vistas** |  | 3d | 2015-09-28 A | 2015-09-30 | 4 | 50% | 1.5d | 0d |  |  |  |
| 10 | 1.1.1.2.1 | Diseño vista búsqueda |  | 3d | 2015-09-28 A | 2015-09-30 |  | 60% | 1.2d | 0d |  |  | Tomas Ruz |
| 11 | 1.1.1.2.2 | Diseño vista resultados |  | 3d | 2015-09-28 A | 2015-09-30 |  | 40% | 1.8d | 0d |  |  | Hernan Galvéz |
| 12 | 1.1.1.2.3 | Diseño vistas terminado | milestone | 0d | 2015-09-30 | 2015-09-30 | 10, 11 |  |  | 0d |  |  |  |
| 13 | 1.1.1.3 | Validación Diseño y cambios |  | 2d | 2015-09-30 | 2015-10-02 | 9, 4 |  |  | 0d |  |  | Yanira Guevara |
| 14 | 1.1.1.4 | Control de estandar de código |  | 1.25d | 2015-10-01 | 2015-10-02 |  |  |  | -0.15d | 0d | start no earlier than 2015-10-01 | Yanira Guevara |
| 15 | 1.1.1.5 | Diseño terminado | milestone | 0d | 2015-10-02 | 2015-10-02 | 13 |  |  | 0d |  |  |  |
| 16 | 1.1.2 | **Implementación Interfaz** |  | 8.15d? | 2015-10-02 A | 2015-10-12 | 3 | 1% | 8.04d? | 0d |  |  |  |
| 17 | 1.1.2.1 | **Implementación vista resultados** |  | 8d | 2015-10-02 | 2015-10-12 |  |  |  | 0d |  |  |  |
| 18 | 1.1.2.1.1 | Comunicación con servidor |  | 5d | 2015-10-02 | 2015-10-07 |  |  |  | 0d |  |  | Daniel Rojas |
| 19 | 1.1.2.1.2 | Filtrado-Resultados |  | 5d | 2015-10-02 | 2015-10-07 |  |  |  | 0d |  |  | Hans Schaa |
| 20 | 1.1.2.1.3 | Look-and-feel |  | 4d | 2015-10-02 | 2015-10-06 |  |  |  | 1d |  |  | Gustavo Rojas |
| 21 | 1.1.2.1.4 | Control de estandar de código |  | 1.25d | 2015-10-08 | 2015-10-09 |  |  |  | 1.1d |  | start no earlier than 2015-10-08 | Carlos Hernandez |
| 22 | 1.1.2.1.5 | Testing, validación y cambios vista resultados |  | 3d | 2015-10-07 | 2015-10-12 | 18, 19, 20 |  |  | 0d |  |  | Juan Cordero |
| 23 | 1.1.2.1.6 | Vista resultados terminada | milestone | 0d | 2015-10-12 | 2015-10-12 | 22 |  |  | 0d |  |  |  |
| 24 | 1.1.2.2 | **Implementación vista busquedas** |  | 8d | 2015-10-02 | 2015-10-12 |  |  |  | 0d |  |  |  |
| 25 | 1.1.2.2.1 | Comunicación con servidor |  | 5d | 2015-10-02 | 2015-10-07 | 18SS |  |  | 0d |  |  | Juan Abello |
| 26 | 1.1.2.2.2 | Selección filtros |  | 3d | 2015-10-02 | 2015-10-06 |  |  |  | 2d |  |  | Hans Schaa |
| 27 | 1.1.2.2.3 | Look-and-feel |  | 3d | 2015-10-02 | 2015-10-06 |  |  |  | 2d |  |  | Gustavo Rojas |
| 28 | 1.1.2.2.4 | Control de estandar de código |  | 1.25d | 2015-10-02 | 2015-10-05 |  |  |  | 6.75d |  | start no earlier than 2015-10-02 | Carlos Hernandez |
| 29 | 1.1.2.2.5 | Testing, validación y cambios vista busquedas |  | 3d | 2015-10-07 | 2015-10-12 | 25, 26, 27 |  |  | 0d |  |  | Pedro Gonzalez |
| 30 | 1.1.2.2.6 | Vista busquedas terminada | milestone | 0d | 2015-10-12 | 2015-10-12 | 29 |  |  | 0d |  |  |  |

| ID | WBS | Task | Type | Duration | Start | Finish | Predecessors | Complete | Remaining | Total slack | Free slack | Responsable |
| --- | --- | --- | --- | --- | --- | --- | --- | --- | --- | --- | --- | --- |
| 31 | 1.1.2.3 | **Implementación "Eye-candy"** |  | 5.15d? | 2015-10-02 A | 2015-10-07 |  | 5% | 4.87d? | 3d |  |  |
| 32 | 1.1.2.3.1 | Splash Screen |  | 2d | 2015-10-02 | 2015-10-05 |  |  |  | 4d | 1d | Juan Abello |
| 33 | 1.1.2.3.2 | Pantalla ayuda |  | 3d | 2015-10-02 A | 2015-10-06 |  | 20% | 2.4d | 3.15d | 0.15d | Daniela Paredes |
| 34 | 1.1.2.3.3 | Tool tips |  | 3d | 2015-10-02 | 2015-10-06 |  |  |  | 3d | 0d | Henri Torres |
| 35 | 1.1.2.3.4 | Control de estandar de código |  | 1d? | 2015-10-02 | 2015-10-05 |  |  |  | 7d |  | Carlos Hernandez |
| 36 | 1.1.2.3.5 | Testing, validación y cambios "Eye-candy" |  | 2d | 2015-10-06 | 2015-10-07 | 32, 33, 34 |  |  | 3d | 0d | Claudio Valdebenito |
| 37 | 1.1.2.3.6 | "Eye-candy" terminado | milestone | 0d | 2015-10-07 | 2015-10-07 | 36 |  |  | 3d |  |  |
| 38 | 1.1.3 | Validación y cambios a interfaz gráfica |  | 3d | 2015-10-12 | 2015-10-14 | 16 |  |  | 0d |  | Yanira Guevara |
| 39 | 1.1.4 | Prueba de integración Interfaz |  | 2d | 2015-10-14 | 2015-10-15 | 38, 66 |  |  | 0d |  | Yorch Sepúlveda |
| 40 | 1.1.5 | Diseño e implementación interfaz gráfica terminada | milestone | 0d | 2015-10-15 | 2015-10-15 | 39 |  |  | 0d |  |  |
| 41 | 1.2 | **Módulo Servidor** |  | 21.15d? | 2015-09-24 A | 2015-10-15 |  | 7% | 19.62d? | 0d |  |  |
| 42 | 1.2.1 | **Construcción base de datos** |  | 6d? | 2015-09-24 A | 2015-09-30 |  | 43% | 3.4d? | 4.15d | 0d |  |
| 43 | 1.2.1.1 | Construcción DB |  | 3d | 2015-09-24 A | 2015-09-28 A |  | 100% |  |  |  | Carlos Huerta |
| 44 | 1.2.1.2 | Poblar tablas con datos |  | 2d | 2015-09-28 | 2015-09-29 | 43 |  |  | 5.15d | 1d | Christian Marchant |
| 45 | 1.2.1.3 | Validación base de datos |  | 3d | 2015-09-28 A | 2015-09-30 | 43 | 30% | 2.1d | 4.15d | 0d | Gonzalo Rojas |
| 46 | 1.2.1.4 | Control de base de datos |  | 1d? | 2015-09-24 | 2015-09-25 |  |  |  | 9.15d |  | Claudio Valdebenito |
| 47 | 1.2.1.5 | Base de datos lista | milestone | 0d | 2015-09-30 | 2015-09-30 | 45, 44 |  |  | 4.15d |  |  |
| 48 | 1.2.2 | **Implementación servicio web** |  | 13.15d? | 2015-09-28 | 2015-10-12 | 43 |  |  | 0d |  |  |
| 49 | 1.2.2.1 | **Conectar DB** |  | 9d? | 2015-09-28 | 2015-10-06 |  |  |  | 4.15d |  |  |
| 50 | 1.2.2.1.1 | **Conexión módulo cliente** |  | 7d? | 2015-09-28 | 2015-10-05 |  |  |  | 4.15d | 0d |  |
| 51 | 1.2.2.1.1.1 | Definir protocólo comunicación |  | 4d | 2015-09-30 | 2015-10-05 | 42 |  |  | 4.15d | 0d | Erik Regla |
| 52 | 1.2.2.1.1.2 | Establecer modelo datos |  | 4d | 2015-09-30 | 2015-10-05 | 51SS |  |  | 4.15d |  | Daniel Pavez |
| 53 | 1.2.2.1.1.3 | Control de base de datos |  | 1d? | 2015-09-28 | 2015-09-29 |  |  |  | 10.15d |  | Claudio Valdebenito |
| 54 | 1.2.2.1.2 | Testing, validación y cambios conexión DB |  | 2d | 2015-10-05 | 2015-10-06 | 50 |  |  | 4.15d | 0d | Hector Castillo |
| 55 | 1.2.2.1.3 | Conexión DB termianda | milestone | 0d | 2015-10-06 | 2015-10-06 | 54 |  |  | 4.15d |  |  |

| ID | WBS | Task | Type | Duration | Start | Finish | Predecessors | Complete | Remaining | Total slack | Free slack | Responsable |
| --- | --- | --- | --- | --- | --- | --- | --- | --- | --- | --- | --- | --- |
| 56 | 1.2.2.2 | **Implementación busquedas** |  | 8d? | 2015-10-02 | 2015-10-12 | 24SS |  |  | 0d |  |  |
| 57 | 1.2.2.2.1 | Búsqueda por filtro (tag) |  | 6d | 2015-10-02 | 2015-10-08 |  |  |  | 0d |  | Cristian Farias |
| 58 | 1.2.2.2.2 | Búsqueda por fecha |  | 6d | 2015-10-02 | 2015-10-08 |  |  |  | 0d |  | Bastián Sepúlveda |
| 59 | 1.2.2.2.3 | Búsqueda por bloque libre |  | 6d | 2015-10-02 | 2015-10-08 |  |  |  | 0d |  | Victor Reyes |
| 60 | 1.2.2.2.4 | Control de código en implementación de búsqueda |  | 1d? | 2015-10-02 | 2015-10-05 |  |  |  | 7d |  | Juan Cordero |
| 61 | 1.2.2.2.5 | Testing, validación y cambios implementación busquedas |  | 2d | 2015-10-08 | 2015-10-12 | 57, 58, 59 |  |  | 0d |  | Claudio Valdebenito |
| 62 | 1.2.2.2.6 | Sistema búsquedas terminado | milestone | 0d | 2015-10-12 | 2015-10-12 | 61 |  |  | 0d |  |  |
| 63 | 1.2.2.3 | Manejo excepciones |  | 6d | 2015-10-05 | 2015-10-12 | 56FF |  |  | 0d |  | Carlos Arias |
| 64 | 1.2.2.4 | Definición modelo de datos |  | 2d | 2015-09-28 | 2015-09-29 |  |  |  | 11.15d |  | Alvaro Elgueda |
| 65 | 1.2.2.5 | Implementacion servicio web terminada | milestone | 0d | 2015-10-12 | 2015-10-12 | 49, 56, 63, 64 |  |  | 0d |  |  |
| 66 | 1.2.3 | Validación y cambios a servicios web y DB |  | 3d | 2015-10-12 | 2015-10-14 | 48 |  |  | 0d |  | Hector Castillo |
| 67 | 1.2.4 | Prueba de integración 2 (Conexión de DB e implementación de búsquedas ) |  | 2d | 2015-10-14 | 2015-10-15 | 66 |  |  | 0d |  | Yorch Sepúlveda |
| 68 | 1.2.5 | Diseño e implementación DB terminada | milestone | 0d | 2015-10-15 | 2015-10-15 | 67 |  |  | 0d |  |  |
| 69 | 1.3 | **Capacitaciones** |  | 6d | 2015-09-24 A | 2015-09-30 |  | 50% | 3d | 15.15d |  |  |
| 70 | 1.3.1 | Uso de Git y GitHub |  | 1d | 2015-09-24 A | 2015-09-25 A | 2SS | 100% |  |  |  | Erik Regla |
| 71 | 1.3.2 | Desarrollo de servicios web utilizando Java y GlassFish 1 |  | 1d | 2015-09-24 A | 2015-09-25 A | 2SS | 100% |  |  |  | Erik Regla |
| 72 | 1.3.3 | Desarrollo de servicios web utilizando Java y GlassFish 2 |  | 1d | 2015-09-29 | 2015-09-30 | 42FF |  |  | 15.15d | 0d | Daniel Rojas |
| 73 | 1.3.4 | Diseño de interfaces gráficas para JavaFX |  | 1d | 2015-09-24 | 2015-09-25 | 2SS |  |  | 20.15d | 5d | Daniela Paredes |
| 74 | 1.3.5 | Uso de bases de datos SQLite en Java 1 |  | 1d | 2015-09-24 A | 2015-09-25 A | 2SS | 100% |  |  |  | Erik Regla |
| 75 | 1.3.6 | Uso de bases de datos SQLite en Java 2 |  | 1d | 2015-09-29 | 2015-09-30 | 42FF |  |  | 15.15d | 0d | Carlos Huerta |
| 76 | 1.3.7 | Personal Capacitado | milestone | 0d | 2015-09-30 | 2015-09-30 | 70, 71, 72, 73, 74, 75 |  |  | 15.15d |  |  |
| 77 | 1.4 | Prueba de integración final |  | 5d | 2015-10-15 | 2015-10-21 | 2, 41, 69 |  |  | 0d |  | Yorch Sepúlveda |
| 78 | 1.5 | Etapa 1 finalizada | milestone | 0d | 2015-10-21 | 2015-10-21 | 77 |  |  | 0d |  |  |
| 79 | 1.6 | Entrega producto | milestone | 0d | 2015-10-21 | 2015-10-21 | 78 |  |  | 0d |  |  |
